# Proyecto (FASE4)

Schedule from MS Project, 2013-03-22 to 2014-02-24.

## Calendars

- Estándar: Mon-Fri 09:00-13:00, 15:00-19:00; Sat-Sun off.

## Resources

| Resource | Rate |
| --- | --- |
| DIRECTOR PROYECTO | 60 |
| INGENIERO AGRONOMO | 48 |
| EXPERTO GIS | 47 |
| ECONOMISTA | 45 |
| SOCIOLOGO | 45 |
| INGENIERO EN MEDIOAMBIENTE | 45 |
| ADMINISTRATIVO | 30 |
| TECNICOS DE APOYO | 35 |

## Schedule

| ID | WBS | Task | Type | Duration | Start | Finish | Predecessors | Total slack | Free slack |
| --- | --- | --- | --- | --- | --- | --- | --- | --- | --- |
| 1 | 1 | TOTAL PROYECTO |  | 242d | 2013-03-22 | 2014-02-24 |  | 0d |  |
| 2 | 1.1 | FASE 1: PREPARACION PARA LA FORMULACION |  | 31d | 2013-03-22 | 2013-05-03 |  | 211d |  |
| 3 | 1.1.1 | INICIO | milestone | 0d | 2013-03-22 | 2013-03-22 |  | 28.27d | 0d |
| 4 | 1.1.2 | TERMINOS DE REFERENCIA. Objetivos. Condicionantes del Promotor |  | 0.4d | 2013-03-22 | 2013-03-22 | 3 | 28.34d | 0.07d |
| 5 | 1.1.3 | FINANCIACION |  | 0.47d | 2013-03-22 | 2013-03-22 | 3 | 28.27d | 0d |
| 6 | 1.1.4 | COMITÉ DE COORDINACION. Constitución y organización |  | 0.2d | 2013-03-22 | 2013-03-22 | 3 | 28.74d | 0d |
| 7 | 1.1.5 | EQUIPO DE FORMULACION. Recursos humanos y técnicos |  | 1.5d | 2013-03-22 | 2013-03-25 | 4SS, 6 | 32.04d | 3.77d |
| 8 | 1.1.6 | METODOLOGIA Y PLAN DE TRABAJO |  | 2d | 2013-03-22 | 2013-03-26 | 4, 5, 6SS, 7FS-5d | 28.27d | 0d |
| 9 | 1.1.7 | DOC. Nº1: Fin P.F. |  | 0.25d | 2013-03-26 | 2013-03-26 | 8 | 28.27d | 0d |
| 10 | 1.1.8 | Entrega al PROMOTOR. Doc. nº1 | milestone | 0d | 2013-03-26 | 2013-03-26 | 9 | 28.27d | 0d |
| 11 | 1.1.9 | SEMINARIO DE LANZAMIENTO DEL PROYECTO |  | 0.01d | 2013-03-26 | 2013-03-26 | 10 | 28.27d | 0d |
| 12 | 1.2 | FASE 2: ANALISIS Y DIAGNOSTICO |  | 94d | 2013-03-22 | 2013-07-31 |  | 148d |  |
| 13 | 1.2.1 | ANALISIS ANTECEDENTES |  | 15d | 2013-03-26 | 2013-04-16 | 11 | 199.27d | 37.27d |
| 14 | 1.2.1.1 | POLITICAS Y PROGRAMAS |  | 10d | 2013-03-26 | 2013-04-09 | 11 | 204.27d | 42.27d |
| 15 | 1.2.1.2 | MARCO LEGAL |  | 15d | 2013-03-26 | 2013-04-16 | 11 | 199.27d | 37.27d |
| 16 | 1.2.1.3 | BASES DE DATOS EXISTENTES |  | 7d | 2013-03-26 | 2013-04-04 | 11 | 28.27d | 0d |
| 17 | 1.2.2 | ANALISIS DEL AREA DEL PROYECTO |  | 80d | 2013-04-04 | 2013-07-25 | 11, 16 | 152.27d |  |
| 18 | 1.2.2.1 | ANALISIS DE RECURSOS NATURALES. INVENTARIO AMBIENTAL |  | 35d | 2013-03-22 | 2013-05-09 |  | 162d | 0d |
| 19 | 1.2.2.2 | INFRAESTRUCTURAS Y SERVICIOS |  | 20d | 2013-05-10 | 2013-06-06 | 18 | 162d | 0d |
| 20 | 1.2.2.3 | ANALISIS DE SECTORES PRODUCTIVOS |  | 25d | 2013-06-07 | 2013-07-11 | 13, 14, 15, 19 | 162d |  |
| 21 | 1.2.2.4 | ANALISIS POBLACIONAL |  | 20d | 2013-03-22 | 2013-04-18 |  | 222d |  |
| 22 | 1.2.2.5 | SISTEMA GENERAL TERRITORIAL DE INFORMACION |  | 21d | 2013-04-04 | 2013-05-03 | 16 | 28.27d | 0d |
| 23 | 1.2.3 | ANALISIS DE AGENTES Y PARTICIPACION |  | 82d | 2013-03-22 | 2013-07-15 |  | 160d |  |
| 24 | 1.2.3.1 | IDENTIFICACIÓN DE AGENTES Y TIPOLOGIA |  | 10d | 2013-04-11 | 2013-04-25 | 22SS+5d | 28.27d | 0d |
| 25 | 1.2.3.2 | ANALISIS DE LA PARTICIPACIÓN: ENCUESTA CON LOS AGENTES |  | 60d | 2013-04-25 | 2013-07-18 | 24 | 28.27d | 0d |
| 26 | 1.2.3.3 | TALLER DE PARTICIPACIÓN AGENTES PUBLICOS |  | 1d | 2013-05-09 | 2013-05-10 | 25SS+10d | 71.27d | 0d |
| 27 | 1.2.3.4 | ANALISIS PROSPECTIVO "SIN" |  | 6d | 2013-05-10 | 2013-05-20 | 26 | 71.27d | 43d |
| 28 | 1.2.3.5 | INFORME DE PARTICIPACION: Problemas, necesidades, oportunidades |  | 10d | 2013-07-18 | 2013-08-01 | 25, 27 | 28.27d | 0d |
| 29 | 1.2.3.6 | PRESENTACIÓN Y VALIDACION DE CONCLUSIONES |  | 2d | 2013-08-01 | 2013-08-05 | 28 | 28.27d | 0d |
| 30 | 1.2.4 | CONCLUSIONES Y Doc. Nº2. Presentación al PROMOTOR | milestone | 0d | 2013-08-05 | 2013-08-05 | 29 | 28.27d | 0d |
| 31 | 1.2.5 | Doc. nº2. REVISIÓN POR EL PROMOTOR | milestone | 0d | 2013-08-05 | 2013-08-05 | 29, 30 | 28.27d | 0d |
| 32 | 1.3 | FASE 3: DISEÑO DEL PROYECTO |  | 92d | 2013-03-22 | 2013-07-29 |  | 150d |  |
| 33 | 1.3.1 | OBJETIVOS Y METAS |  | 1d | 2013-08-05 | 2013-08-06 | 31 | 28.27d | 0d |
| 34 | 1.3.2 | ALTERNATIVA ESTRATEGICAS: ANÁLISIS Y SELECCIÓN |  | 7d | 2013-08-06 | 2013-08-15 | 33 | 28.27d | 0d |
| 35 | 1.3.3 | FORMULACION DE LOS COMPONENTES |  | 60d | 2013-08-15 | 2013-11-07 | 34 | 28.27d | 0d |
| 36 | 1.3.4 | DISEÑO DE LA ORGANIZACIÓN |  | 10d | 2013-11-07 | 2013-11-21 | 35 | 28.27d | 0d |
| 37 | 1.3.5 | SISTEMA DE SEGUIMIENTO Y EVALUACION. Programación de la ejecución. |  | 7d | 2013-11-21 | 2013-12-02 | 35, 36 | 60.27d |  |
| 38 | 1.3.6 | PRESUPUESTACION |  | 4d | 2013-11-21 | 2013-11-27 | 35, 36 | 28.27d | 0d |
| 39 | 1.3.7 | Doc. Nº 3. Entrega al PROMOTOR | milestone | 0d | 2013-11-27 | 2013-11-27 | 38 | 28.27d | 0d |
| 40 | 1.3.8 | Doc. Nº 3. REVISION POR EL PROMOTOR |  | 10d | 2013-11-27 | 2013-12-11 | 39 | 28.27d | 0d |
| 41 | 1.4 | FASE 4: EVALUACION MULTICRITERIO |  | 15d | 2013-03-22 | 2013-04-11 |  | 227d |  |
| 42 | 1.4.1 | EVALUACION ECONOMICO-FINANCIERA |  | 10d | 2013-12-11 | 2013-12-25 | 40 | 28.27d | 0d |
| 43 | 1.4.2 | EVALUACION SOCIAL Y CULTURAL |  | 10d | 2013-12-11 | 2013-12-25 | 40 | 28.27d | 0d |
| 44 | 1.4.3 | EVALUACION AMBIENTAL |  | 10d | 2013-12-11 | 2013-12-25 | 40 | 28.27d | 0d |
| 45 | 1.4.4 | EVALUACION DE RIESGOS, SEGURIDAD Y SALUD DEL PROYECTO |  | 10d | 2013-12-11 | 2013-12-25 | 40 | 43.27d | 0d |
| 46 | 1.4.5 | Entrega Doc. nº 4. VIABILIDAD Y SOSTENIBLIDAD | milestone | 0d | 2013-12-25 | 2013-12-25 | 45 | 43.27d |  |
| 47 | 1.4.6 | Revisión Doc. nº 4 |  | 5d | 2013-12-25 | 2014-01-01 | 42, 43, 44 | 28.27d | 0d |
| 48 | 1.5 | FAE 5: DOCUMENTACION |  | 10d | 2013-03-22 | 2013-04-04 |  | 232d |  |
| 49 | 1.5.1 | MEMORIA |  | 6d | 2014-01-01 | 2014-01-09 | 47 | 32.27d | 4d |
| 50 | 1.5.2 | ANEJOS A LA MEMORIA |  | 10d | 2014-01-01 | 2014-01-15 | 47 | 28.27d | 0d |
| 51 | 1.5.3 | PLANOS |  | 10d | 2014-01-01 | 2014-01-15 | 47 | 28.27d | 0d |
| 52 | 1.5.4 | PLIEGO DE CONDICIONES |  | 3d | 2014-01-01 | 2014-01-06 | 47 | 35.27d | 7d |
| 53 | 1.5.5 | PRESUPUESTO |  | 3d | 2014-01-01 | 2014-01-06 | 47 | 35.27d | 7d |
| 54 | 1.5.6 | ESTUDIO DE SEGURIDAD Y SALUD |  | 10d | 2014-01-01 | 2014-01-15 | 47 | 28.27d | 0d |
| 55 | 1.5.7 | Entrega del proyecto | milestone | 0d | 2014-01-15 | 2014-01-15 | 49, 50, 51, 52, 53, 54 | 28.27d |  |
