Schedule from MS Project, 2013-03-22 to 2016-02-15, costs in €.

## Calendars

- Estándar: Mon-Fri 09:00-13:00, 15:00-19:00; Sat-Sun off.

## Resources

| Resource | Rate |
| --- | --- |
| DIRECTOR PROYECTO | 60 |
| INGENIERO AGRONOMO | 48 |
| EXPERTO GIS | 47 |
| ECONOMISTA | 45 |
| SOCIOLOGO | 45 |
| INGENIERO EN MEDIOAMBIENTE | 45 |
| ADMINISTRATIVO | 30 |
| TECNICOS DE APOYO | 35 |

## Schedule

| ID | WBS | Task | Type | Duration | Start | Finish | Predecessors | Total slack | Free slack | Resources | Work | Cost |
| --- | --- | --- | --- | --- | --- | --- | --- | --- | --- | --- | --- | --- |
| 1 | 1 | TOTAL PROYECTO |  | 242d | 2013-03-22 | 2014-02-24 |  | 514.68d |  |  |  |  |
| 2 | 1.1 | FASE 1: PREPARACION PARA LA FORMULACION |  | 31d | 2013-03-22 | 2013-05-03 |  | 725.68d |  |  |  |  |
| 3 | 1.1.1 | INICIO | milestone | 0d | 2013-03-22 | 2013-03-22 |  | 0d |  | DIRECTOR PROYECTO |  |  |
| 4 | 1.1.2 | TERMINOS DE REFERENCIA. Objetivos. Condicionantes del Promotor |  | 10d | 2013-03-22 | 2013-04-04 | 3 | 5d |  | DIRECTOR PROYECTO [25%]; INGENIERO AGRONOMO [25%]; ECONOMISTA [50%]; SOCIOLOGO [25%]; INGENIERO EN MEDIOAMBIENTE [25%] | 80.8h | 3,996 |
| 5 | 1.1.3 | FINANCIACION |  | 7d | 2013-03-22 | 2013-04-01 | 3 | 8d |  | INGENIERO AGRONOMO [25%]; DIRECTOR PROYECTO [15%]; ECONOMISTA [50%]; SOCIOLOGO [25%] | 10.08h | 581.28 |
| 6 | 1.1.4 | COMITÉ DE COORDINACION. Constitución y organización |  | 5d | 2013-03-22 | 2013-03-28 | 3 | 0d |  | DIRECTOR PROYECTO [25%] | 10h | 600 |
| 7 | 1.1.5 | EQUIPO DE FORMULACION. Recursos humanos y técnicos |  | 15d | 2013-03-29 | 2013-04-18 | 4SS, 6 | 0d |  | ADMINISTRATIVO [10%]; DIRECTOR PROYECTO [25%]; ECONOMISTA [20%]; INGENIERO AGRONOMO [10%]; INGENIERO EN MEDIOAMBIENTE [10%]; SOCIOLOGO [10%] | 50.4h | 2,142 |
| 8 | 1.1.6 | METODOLOGIA Y PLAN DE TRABAJO |  | 10d | 2013-04-12 | 2013-04-25 | 4, 5, 6SS, 7FS-5d | 0d |  | ADMINISTRATIVO [50%]; DIRECTOR PROYECTO [50%]; ECONOMISTA; INGENIERO AGRONOMO [50%]; INGENIERO EN MEDIOAMBIENTE [50%]; SOCIOLOGO [50%] | 44h | 1,394.4 |
| 9 | 1.1.7 | DOC. Nº1: Fin P.F. |  | 5d | 2013-04-26 | 2013-05-02 | 8 | 0d |  | ADMINISTRATIVO; DIRECTOR PROYECTO [50%]; ECONOMISTA [50%]; INGENIERO AGRONOMO [20%]; INGENIERO EN MEDIOAMBIENTE [20%]; SOCIOLOGO [20%] | 25.2h | 1,158 |
| 10 | 1.1.8 | Entrega al PROMOTOR. Doc. nº1 |  | 1d | 2013-05-03 | 2013-05-03 | 9 | 0d |  | DIRECTOR PROYECTO [50%] | 4h | 240 |
| 11 | 1.1.9 | SEMINARIO DE LANZAMIENTO DEL PROYECTO |  | 0.01d | 2013-05-06 | 2013-05-06 | 10 | 0d |  | DIRECTOR PROYECTO; ECONOMISTA; SOCIOLOGO; INGENIERO EN MEDIOAMBIENTE; INGENIERO AGRONOMO; ADMINISTRATIVO | 0.48h | 21.84 |
| 12 | 1.2 | FASE 2: ANALISIS Y DIAGNOSTICO |  | 94d | 2013-03-22 | 2013-07-31 |  | 662.68d |  |  |  |  |
| 13 | 1.2.1 | ANALISIS ANTECEDENTES |  | 15d | 2013-05-06 | 2013-05-27 | 11 | 585.67d | 328.99d |  |  |  |
| 14 | 1.2.1.1 | POLITICAS Y PROGRAMAS |  | 50d | 2013-05-06 | 2013-07-15 | 11 | 550.67d | 293.99d | DIRECTOR PROYECTO [20%]; INGENIERO AGRONOMO [50%]; ECONOMISTA [40%]; ADMINISTRATIVO [20%]; INGENIERO EN MEDIOAMBIENTE [20%] | 400h | 18,240 |
| 15 | 1.2.1.2 | MARCO LEGAL |  | 75d | 2013-05-06 | 2013-08-19 | 11 | 525.67d | 268.99d | DIRECTOR PROYECTO [20%]; ADMINISTRATIVO [50%]; INGENIERO AGRONOMO [20%]; ECONOMISTA [40%] | 480h | 21,960 |
| 16 | 1.2.1.3 | BASES DE DATOS EXISTENTES |  | 35d | 2013-05-06 | 2013-06-24 | 11 | 0d |  | DIRECTOR PROYECTO [20%]; INGENIERO AGRONOMO [50%] | 112h | 6,048 |
| 17 | 1.2.2 | ANALISIS DEL AREA DEL PROYECTO |  | 80d | 2013-06-24 | 2013-10-14 | 11, 16 | 610.67d |  |  |  |  |
| 18 | 1.2.2.1 | ANALISIS DE RECURSOS NATURALES. INVENTARIO AMBIENTAL |  | 175d | 2013-03-22 | 2013-11-21 |  | 256.68d | 0d | INGENIERO EN MEDIOAMBIENTE; INGENIERO AGRONOMO [50%]; ECONOMISTA [40%]; ADMINISTRATIVO [20%]; EXPERTO GIS [50%] | 1400h | 60,200 |
| 19 | 1.2.2.2 | INFRAESTRUCTURAS Y SERVICIOS |  | 200d | 2013-11-22 | 2014-08-28 | 18 | 256.68d | 0d | SOCIOLOGO [50%]; INGENIERO AGRONOMO; DIRECTOR PROYECTO [10%]; ADMINISTRATIVO [25%] | 640h | 29,280 |
| 20 | 1.2.2.3 | ANALISIS DE SECTORES PRODUCTIVOS |  | 125d | 2014-08-29 | 2015-02-19 | 13, 14, 15, 19 | 256.68d |  | DIRECTOR PROYECTO [20%]; ECONOMISTA; INGENIERO AGRONOMO [50%]; ADMINISTRATIVO [50%] | 800h | 36,600 |
| 21 | 1.2.2.4 | ANALISIS POBLACIONAL |  | 80d | 2013-03-22 | 2013-07-11 |  | 676.68d |  | SOCIOLOGO; INGENIERO AGRONOMO [25%]; ADMINISTRATIVO [25%] | 480h | 19,680 |
| 22 | 1.2.2.5 | SISTEMA GENERAL TERRITORIAL DE INFORMACION |  | 84d | 2013-06-24 | 2013-10-18 | 16 | 0d |  | SOCIOLOGO; INGENIERO AGRONOMO [25%]; ADMINISTRATIVO [25%]; EXPERTO GIS | 672h | 28,560 |
| 23 | 1.2.3 | ANALISIS DE AGENTES Y PARTICIPACION |  | 82d | 2013-03-22 | 2013-07-15 |  | 674.68d |  |  |  |  |
| 24 | 1.2.3.1 | IDENTIFICACIÓN DE AGENTES Y TIPOLOGIA |  | 40d | 2013-07-01 | 2013-08-26 | 22SS+5d | 0d |  | DIRECTOR PROYECTO [50%]; SOCIOLOGO; INGENIERO AGRONOMO [50%]; ADMINISTRATIVO [25%] | 320h | 14,640 |
| 25 | 1.2.3.2 | ANALISIS DE LA PARTICIPACIÓN: ENCUESTA CON LOS AGENTES |  | 240d | 2013-08-26 | 2014-07-28 | 24 | 0d |  | DIRECTOR PROYECTO [50%]; SOCIOLOGO; INGENIERO AGRONOMO [50%]; ADMINISTRATIVO [25%] | 1920h | 87,840 |
| 26 | 1.2.3.3 | TALLER DE PARTICIPACIÓN AGENTES PUBLICOS |  | 1d | 2013-09-09 | 2013-09-10 | 25SS+10d | 189d | 0d | SOCIOLOGO; INGENIERO AGRONOMO [50%]; ADMINISTRATIVO [50%]; DIRECTOR PROYECTO [15%] | 17.2h | 744 |
| 27 | 1.2.3.4 | ANALISIS PROSPECTIVO "SIN" |  | 40d | 2013-09-10 | 2013-11-05 | 26 | 189d |  | INGENIERO AGRONOMO [25%]; ECONOMISTA [50%]; SOCIOLOGO [25%]; INGENIERO EN MEDIOAMBIENTE [25%]; DIRECTOR PROYECTO [15%] | 240h | 11,664 |
| 28 | 1.2.3.5 | INFORME DE PARTICIPACION: Problemas, necesidades, oportunidades |  | 40d | 2014-07-28 | 2014-09-22 | 25, 27 | 0d |  | DIRECTOR PROYECTO [30%]; INGENIERO AGRONOMO [25%]; ECONOMISTA [50%]; SOCIOLOGO [25%]; INGENIERO EN MEDIOAMBIENTE [25%]; ADMINISTRATIVO [50%] | 480h | 21,840 |
| 29 | 1.2.3.6 | PRESENTACIÓN Y VALIDACION DE CONCLUSIONES |  | 20d | 2014-09-22 | 2014-10-20 | 28 | 0d |  | DIRECTOR PROYECTO [25%]; INGENIERO AGRONOMO [10%]; ECONOMISTA [20%]; SOCIOLOGO [10%]; ADMINISTRATIVO [25%] | 80h | 3,648 |
| 30 | 1.2.4 | CONCLUSIONES Y Doc. Nº2. Presentación al PROMOTOR | milestone | 0d | 2014-10-20 | 2014-10-20 | 29 | 0d |  | ECONOMISTA [50%]; DIRECTOR PROYECTO [50%]; INGENIERO AGRONOMO [25%]; ADMINISTRATIVO; INGENIERO EN MEDIOAMBIENTE [20%] |  |  |
| 31 | 1.2.5 | Doc. nº2. REVISIÓN POR EL PROMOTOR | milestone | 0d | 2014-10-20 | 2014-10-20 | 29, 30 | 0d |  |  |  |  |
| 32 | 1.3 | FASE 3: DISEÑO DEL PROYECTO |  | 92d | 2013-03-22 | 2013-07-29 |  | 664.68d |  |  |  |  |
| 33 | 1.3.1 | OBJETIVOS Y METAS |  | 2d | 2014-10-20 | 2014-10-22 | 31 | 0d |  | DIRECTOR PROYECTO; INGENIERO AGRONOMO [50%] | 16h | 864 |
| 34 | 1.3.2 | ALTERNATIVA ESTRATEGICAS: ANÁLISIS Y SELECCIÓN |  | 14d | 2014-10-22 | 2014-11-11 | 33 | 0d |  | DIRECTOR PROYECTO [50%]; INGENIERO AGRONOMO; ECONOMISTA; INGENIERO EN MEDIOAMBIENTE [50%] | 224h | 11,088 |
| 35 | 1.3.3 | FORMULACION DE LOS COMPONENTES |  | 120d | 2014-11-11 | 2015-04-28 | 34 | 0d |  | INGENIERO AGRONOMO [50%]; ECONOMISTA [50%]; INGENIERO EN MEDIOAMBIENTE [50%] | 1440h | 66,240 |
| 36 | 1.3.4 | DISEÑO DE LA ORGANIZACIÓN |  | 20d | 2015-04-28 | 2015-05-26 | 35 | 0d |  | INGENIERO AGRONOMO [50%]; ECONOMISTA [50%]; INGENIERO EN MEDIOAMBIENTE [50%] | 240h | 11,040 |
| 37 | 1.3.5 | SISTEMA DE SEGUIMIENTO Y EVALUACION. Programación de la ejecución. |  | 28d | 2015-05-26 | 2015-07-03 | 35, 36 | 161.67d |  | ECONOMISTA [50%]; INGENIERO AGRONOMO [50%]; INGENIERO EN MEDIOAMBIENTE [50%] | 336h | 15,456 |
| 38 | 1.3.6 | PRESUPUESTACION |  | 8d | 2015-05-26 | 2015-06-05 | 35, 36 | 0d |  | INGENIERO AGRONOMO [50%]; ECONOMISTA [50%]; INGENIERO EN MEDIOAMBIENTE [50%] | 96h | 4,416 |
| 39 | 1.3.7 | Doc. Nº 3. Entrega al PROMOTOR | milestone | 0d | 2015-06-05 | 2015-06-05 | 38 | 0d |  | DIRECTOR PROYECTO |  |  |
| 40 | 1.3.8 | Doc. Nº 3. REVISION POR EL PROMOTOR |  | 10d | 2015-06-05 | 2015-06-19 | 39 | 0d |  |  |  |  |
| 41 | 1.4 | FASE 4: EVALUACION MULTICRITERIO |  | 15d | 2013-03-22 | 2013-04-11 |  | 741.68d |  |  |  |  |
| 42 | 1.4.1 | EVALUACION ECONOMICO-FINANCIERA |  | 40d | 2015-06-19 | 2015-08-14 | 40 | 26.67d |  | DIRECTOR PROYECTO [25%]; INGENIERO AGRONOMO [50%]; ECONOMISTA | 240h | 12,240 |
| 43 | 1.4.2 | EVALUACION SOCIAL Y CULTURAL |  | 66.67d | 2015-06-19 | 2015-09-21 | 40 | 0d |  | DIRECTOR PROYECTO [25%]; INGENIERO AGRONOMO [50%]; ECONOMISTA [15%]; SOCIOLOGO | 320h | 15,840 |
| 44 | 1.4.3 | EVALUACION AMBIENTAL |  | 66.67d | 2015-06-19 | 2015-09-21 | 40 | 0d |  | DIRECTOR PROYECTO [25%]; INGENIERO AGRONOMO [50%]; ECONOMISTA [15%]; INGENIERO EN MEDIOAMBIENTE | 320h | 15,840 |
| 45 | 1.4.4 | EVALUACION DE RIESGOS, SEGURIDAD Y SALUD DEL PROYECTO |  | 66.67d | 2015-06-19 | 2015-09-21 | 40 | 105d | 0d | DIRECTOR PROYECTO [25%]; INGENIERO AGRONOMO [50%]; ECONOMISTA [15%]; TECNICOS DE APOYO | 320h | 15,040 |
| 46 | 1.4.5 | Entrega Doc. nº 4. VIABILIDAD Y SOSTENIBLIDAD | milestone | 0d | 2015-09-21 | 2015-09-21 | 45 | 105d |  |  |  |  |
| 47 | 1.4.6 | Revisión Doc. nº 4 |  | 5d | 2015-09-21 | 2015-09-28 | 42, 43, 44 | 0d |  |  |  |  |
| 48 | 1.5 | FAE 5: DOCUMENTACION |  | 10d | 2013-03-22 | 2013-04-04 |  | 746.68d |  |  |  |  |
| 49 | 1.5.1 | MEMORIA |  | 60d | 2015-09-28 | 2015-12-21 | 47 | 40d |  | TECNICOS DE APOYO; INGENIERO AGRONOMO [50%]; ECONOMISTA [25%]; DIRECTOR PROYECTO [10%] | 192h | 9,024 |
| 50 | 1.5.2 | ANEJOS A LA MEMORIA |  | 100d | 2015-09-28 | 2016-02-15 | 47 | 0d |  | INGENIERO AGRONOMO [50%]; ECONOMISTA [25%]; DIRECTOR PROYECTO [10%]; INGENIERO EN MEDIOAMBIENTE [50%]; ADMINISTRATIVO [50%]; TECNICOS DE APOYO | 480h | 21,040 |
| 51 | 1.5.3 | PLANOS |  | 100d | 2015-09-28 | 2016-02-15 | 47 | 0d |  | INGENIERO AGRONOMO [50%]; ECONOMISTA [25%]; DIRECTOR PROYECTO [10%]; INGENIERO EN MEDIOAMBIENTE [50%]; ADMINISTRATIVO; TECNICOS DE APOYO; EXPERTO GIS | 560h | 24,800 |
| 52 | 1.5.4 | PLIEGO DE CONDICIONES |  | 30d | 2015-09-28 | 2015-11-09 | 47 | 70d |  | INGENIERO AGRONOMO [50%]; INGENIERO EN MEDIOAMBIENTE [50%]; ECONOMISTA [25%]; DIRECTOR PROYECTO [10%]; ADMINISTRATIVO [50%]; TECNICOS DE APOYO | 144h | 6,312 |
| 53 | 1.5.5 | PRESUPUESTO |  | 30d | 2015-09-28 | 2015-11-09 | 47 | 70d |  | ECONOMISTA [25%]; INGENIERO AGRONOMO [50%]; DIRECTOR PROYECTO [10%]; INGENIERO EN MEDIOAMBIENTE [50%]; ADMINISTRATIVO [50%]; TECNICOS DE APOYO | 144h | 6,312 |
| 54 | 1.5.6 | ESTUDIO DE SEGURIDAD Y SALUD |  | 100d | 2015-09-28 | 2016-02-15 | 47 | 0d |  | INGENIERO AGRONOMO [50%]; ECONOMISTA [25%]; DIRECTOR PROYECTO [10%]; INGENIERO EN MEDIOAMBIENTE [50%]; ADMINISTRATIVO [50%]; TECNICOS DE APOYO | 480h | 21,040 |
| 55 | 1.5.7 | Entrega del proyecto | milestone | 0d | 2016-02-15 | 2016-02-15 | 49, 50, 51, 52, 53, 54 | 0d |  |  |  |  |
